# MEx_Plan

How a schedule from MS Project changed from version to version. A marks actual dates.

## Version 1 (saved 2017-06-01)

| ID | WBS | Task | Duration | Start | Finish | Complete | Total float | Constraint |
| --- | --- | --- | --- | --- | --- | --- | --- | --- |
| 1 | 1 | **Capstone Project Plan** | 80d | 2017-05-08 A | 2017-08-25 | 23% | 0d |  |
| 2 | 1.1 | **Phase 1: Create Function required** | 45d | 2017-05-08 A | 2017-07-07 | 44% | 0d |  |
| 3 | 1.1.1 | **1. Initiating** | 3d | 2017-05-08 A | 2017-05-10 A | 100% |  |  |
| 4 |  | 1.1. Generate Project Ideas | 2d | 2017-05-08 A | 2017-05-09 A | 100% |  |  |
| 5 |  | 1.2. Ideas Review | 1d | 2017-05-09 A | 2017-05-09 A | 100% |  |  |
| 6 |  | 1.3. Meeting for closing final topic and set group working rules | 1d | 2017-05-10 A | 2017-05-10 A | 100% |  |  |
| 7 | 1.1.2 | **2. Planing and preparing** | 11d | 2017-05-12 A | 2017-05-26 A | 100% |  |  |
| 8 |  | 2.1. Requirement analysis and Planning | 2d | 2017-05-12 A | 2017-05-15 A | 100% |  |  |
| 9 |  | 2.2. Tools and devices analysis and choosing | 1d | 2017-05-15 A | 2017-05-15 A | 100% |  |  |
| 10 |  | 2.3. Download and intall softwares | 2d | 2017-05-16 A | 2017-05-17 A | 100% |  |  |
| 11 |  | 2.4. Order Pi-kit and Wifi sheild from over sea | 8d | 2017-05-17 A | 2017-05-26 A | 100% |  |  |
| 12 | 1.1.3 | **3. Technical understanding** | 11d | 2017-05-16 A | 2017-05-30 A | 100% |  |  |
| 13 |  | 3.1. Studying Android and Java development | 11d | 2017-05-16 A | 2017-05-30 A | 100% |  |  |
| 14 |  | 3.2. Study about MEx technology | 6d | 2017-05-16 A | 2017-05-23 A | 100% |  |  |
| 15 |  | 3.3. Study Wifi communication and module Wifi Sheild | 9d | 2017-05-16 A | 2017-05-26 A | 100% |  |  |
| 16 |  | 3.4. Study about Arduino, Pi | 9d | 2017-05-16 A | 2017-05-26 A | 100% |  |  |
| 17 |  | 3.5. Study about Circuit of hardware | 9d | 2017-05-16 A | 2017-05-26 A | 100% |  |  |
| 18 | 1.1.4 | **4. Design** | 6d | 2017-05-29 A | 2017-06-05 | 67% | 0d |  |
| 19 |  | 4.1. Design Car model for MEx System | 6d | 2017-05-29 A | 2017-06-05 | 67% |  |  |
| 20 |  | 4.2. Design Controller for Mex system | 3d | 2017-06-01 A | 2017-06-05 | 67% |  |  |
| 21 |  | 4.3 Embedded and Android Software Archtecture design | 3d | 2017-06-01 A | 2017-06-05 A | 100% |  |  |
| 22 |  | 4.4. Embedded and Android Software Detailed design | 3d | 2017-06-01 A | 2017-06-05 | 33% |  |  |
| 23 | 1.1.5 | **5. Implementation** | 19d | 2017-06-01 | 2017-06-27 |  | 0d |  |
| 24 |  | 5.1. Assemble Components | 6d | 2017-06-05 | 2017-06-12 |  |  |  |
| 25 |  | 5.2. Code for wifi communication | 6d | 2017-06-12 | 2017-06-19 |  |  |  |
| 26 |  | 5.3. Code for Car model embedded software module | 18d | 2017-06-01 | 2017-06-26 |  |  |  |
| 27 |  | 5.4. Code for Controller embedded softwate module | 19d | 2017-06-01 | 2017-06-27 |  |  |  |
| 28 |  | 5.5.Code for Android application | 17d | 2017-06-01 | 2017-06-23 |  |  |  |
| 29 | 1.1.6 | **6. Testing** | 18d | 2017-06-14 | 2017-07-07 |  | 0d |  |
| 30 |  | 6.1. Design test cases | 4d | 2017-06-14 | 2017-06-19 |  |  |  |
| 31 |  | 6.2. Hardware unit test | 3d | 2017-06-20 | 2017-06-22 |  |  |  |
| 32 |  | 6.3. Hardware system test | 2d | 2017-06-23 | 2017-06-25 |  |  |  |
| 33 |  | 6.4. Software unit test | 3d | 2017-06-27 | 2017-06-29 |  |  |  |
| 34 |  | 6.5. Software system test | 2d | 2017-06-30 | 2017-07-01 |  |  |  |
| 35 |  | 6.6. System test | 5d | 2017-07-03 | 2017-07-07 |  |  |  |
| 36 | 1.2 | **Phase 2: Additional Function** | 30d | 2017-07-10 | 2017-08-18 |  | 3d |  |
| 37 |  | 1. Planning | 4d | 2017-07-10 | 2017-07-13 |  | 31d | finish no earlier than 2017-07-13 |
| 38 | 1.2.2 | **2. Design** | 6d | 2017-07-13 | 2017-07-20 |  | 0d |  |
| 39 |  | 2.1. Design for Hardware | 6d | 2017-07-13 | 2017-07-20 |  |  |  |
| 40 |  | 2.2. Design for embedded software | 4d | 2017-07-17 | 2017-07-20 |  |  |  |
| 41 | 1.2.3 | **3. Implementation** | 13d | 2017-07-19 | 2017-08-04 |  | 0d |  |
| 42 |  | 3.1. Assemble components | 13d | 2017-07-19 | 2017-08-04 |  |  |  |
| 43 |  | 3.2. Update Embedded software | 13d | 2017-07-19 | 2017-08-04 |  |  |  |
| 44 | 1.2.4 | **4. Testing** | 10d | 2017-08-07 | 2017-08-18 |  | 0d |  |
| 45 |  | 4.1. Design Test cases | 3d | 2017-08-07 | 2017-08-09 |  |  |  |
| 46 |  | 4.2. Hardware unit test | 3d | 2017-08-07 | 2017-08-09 |  |  |  |
| 47 |  | 4.3. System test | 7d | 2017-08-10 | 2017-08-18 |  |  |  |
| 48 | 1.3 | **Prepare for the Thesis Defend** | 5d | 2017-08-20 | 2017-08-25 |  | 0d |  |
| 49 |  | 1. Project review | 2d | 2017-08-20 | 2017-08-21 |  |  |  |
| 50 |  | 2. Print documents | 1d | 2017-08-21 | 2017-08-21 |  |  |  |
| 51 |  | 3. Prepare for the final presentation | 3d | 2017-08-23 | 2017-08-25 |  |  |  |
| 52 | 1.4 | **Document** | 72d | 2017-05-11 | 2017-08-19 |  | 0d |  |
| 53 |  | 1. Report 1: Introduction | 6d | 2017-05-11 | 2017-05-18 |  |  |  |
| 54 |  | 2. Report 2: Project management plan | 6d | 2017-05-22 | 2017-05-29 |  |  |  |
| 55 |  | 3. Report 3: System requirements specifications | 16d | 2017-05-29 | 2017-06-19 |  |  |  |
| 56 |  | 4. Report 4: System design description | 10d | 2017-06-26 | 2017-07-07 |  |  |  |
| 57 |  | 5. Report 5: System implementation & test | 21d | 2017-07-10 | 2017-08-07 |  |  |  |
| 58 |  | 6. Report 6: System User's Manual | 11d | 2017-08-07 | 2017-08-19 |  |  |  |
| 59 |  | 7. Slide | 7d | 2017-08-11 | 2017-08-19 |  |  |  |
| 60 |  | 8. Final report | 7d | 2017-08-11 | 2017-08-19 |  |  |  |

## Version 2 (saved 2017-08-20)

Note of the change: Update Project plan

Last finish stays 2017-08-25. Complete tasks 13 → 66.

Added:

| ID | Task | Duration | Start | Finish | Resources |
| --- | --- | --- | --- | --- | --- |
| 12 | **1.2.5. Project Integration Management** | 3d | 2017-05-12 A | 2017-05-16 A |  |
| 13 | Develop Project management plan | 3d | 2017-05-12 A | 2017-05-16 A | AnhLB |
| 14 | 1.2.6. Setup project environment | 3d | 2017-05-12 A | 2017-05-16 A | MEx Team |
| 15 | **1.2.7. Project Scope Management** | 3d | 2017-05-12 A | 2017-05-16 A |  |
| 16 | 1.2.7.1. Define project scope | 2d | 2017-05-12 A | 2017-05-15 A | MEx Team |
| 17 | 1.2.7.2. Collect requirements | 3d | 2017-05-12 A | 2017-05-16 A | MEx Team |
| 18 | **1.2.8. Project Time Management** | 5d | 2017-05-16 A | 2017-05-21 A |  |
| 19 | 1.2.8.1. Build work breakdown | 5d | 2017-05-16 A | 2017-05-21 A | AnhLB |
| 20 | 1.2.8.2. Develop resources plan | 5d | 2017-05-16 A | 2017-05-21 A | HoangPM; HuongLX |
| 21 | **1.2.9. Project Quality Management** | 4d | 2017-05-19 A | 2017-05-24 A |  |
| 22 | 1.2.9.1. Create quality criteria | 2d | 2017-05-19 A | 2017-05-21 A | AnhLB; LuatPD |
| 23 | 1.2.9.2. Create quality management plan | 4d | 2017-05-21 A | 2017-05-24 A | LuatPD |
| 24 | **1.2.10. Project Risk Management** | 10d | 2017-05-15 A | 2017-05-26 A |  |
| 25 | 1.2.10.1. Identify risks | 8d | 2017-05-15 A | 2017-05-24 A | LuatPD; TuDN |
| 26 | 1.2.10.2. Plan risk mamagement | 3d | 2017-05-24 A | 2017-05-26 A | LuatPD; TuDN |
| 35 | 1.4.1.1. Create a Car with 3 servo | 6d | 2017-05-29 A | 2017-06-05 A | HuongLX |
| 44 | 1.5.5. Make move (forward, backward, turnleft, turnright) controlled by Android app | 10d | 2017-06-12 A | 2017-06-23 A | AnhLB; HuongLX; LuatPD |
| 54 | 2.1.1. Study python and Rasberry Pi | 4d | 2017-07-10 A | 2017-07-13 A | AnhLB; HuongLX |
| 58 | 2.2.3. Update Android Software Archtecture design | 5d | 2017-07-17 A | 2017-07-21 A | PhongDC; TuDN |
| 62 | 2.3.3. Code for Raspi, communication between Car(Pi) and controller | 9d | 2017-07-19 A | 2017-07-31 A | AnhLB; HuongLX |
| 63 | 2.3.4. Add camera function and GearVR | 7d | 2017-07-23 A | 2017-07-31 A | PhonngDC; TuDN |
| 64 | 2.3.5. Update Android application with more function | 13d | 2017-07-19 A | 2017-08-04 A | LuatPD; PhongDC; TuDN |
| 65 | 2.3.6. Complete Car Model | 11d | 2017-07-30 A | 2017-08-11 A | HuongLX; TuDN; AnhLB |
| 66 | 2.3.7 Run in fact | 2d | 2017-07-10 | 2017-07-11 | MEx Team |
| 71 | 2.4.4. Software unit test | 7d | 2017-08-10 A | 2017-08-18 A | AnhLB; PhongDC |
| 72 | 2.4.5. Software system test | 7d | 2017-08-10 A | 2017-08-18 A | PhongDC; TuDN |
| 73 | **2.5. Perform quality assurance** | 3d | 2017-08-15 A | 2017-08-17 A |  |
| 74 | 2.5.1. Review coding | 3d | 2017-08-15 A | 2017-08-17 A | AnhLB; LuatPD |
| 75 | 2.5.2. Integration test | 3d | 2017-08-15 A | 2017-08-17 A | LuatPD; PhongDC |
| 76 | 2.5.3. Acquire project team | 3d | 2017-08-15 A | 2017-08-17 A | AnhLB |

Removed: 27 5.4. Code for Controller embedded softwate module

Changed:

| ID | Task | Start | Finish | Duration | Complete | Total float | Other |
| --- | --- | --- | --- | --- | --- | --- | --- |
| 1 | **Capstone Project Plan** |  |  |  | 23% → 99% |  |  |
| 2 | **Phase 1: Create Function required for Car** |  | 2017-07-07 A |  | 44% → 100% | 0d → none | was named Phase 1: Create Function required |
| 3 | **1.1. Initiating** |  |  |  |  |  | was named 1. Initiating |
| 4 | 1.1.1. Generate Project Ideas |  |  |  |  |  | was named 1.1. Generate Project Ideas |
| 5 | 1.1.2. Ideas Review |  |  |  |  |  | was named 1.2. Ideas Review |
| 6 | 1.1.3. Meeting for closing final topic and set group working rules |  |  |  |  |  | was named 1.3. Meeting for closing final topic and set group working rules |
| 7 | **1.2. Planing and preparing** |  |  |  |  |  | was named 2. Planing and preparing |
| 8 | 1.2.1. Requirement analysis and Planning |  |  |  |  |  | was named 2.1. Requirement analysis and Planning |
| 9 | 1.2.2. Tools and devices analysis and choosing |  |  |  |  |  | was named 2.2. Tools and devices analysis and choosing |
| 10 | 1.2.3. Download and intall softwares |  |  |  |  |  | was named 2.3. Download and intall softwares |
| 11 | 1.2.4. Order Pi-kit and Wifi sheild from over sea |  |  |  |  |  | was named 2.4. Order Pi-kit and Wifi sheild from over sea |
| 27 | **1.3. Technical understanding** |  |  |  |  |  | was named 3. Technical understanding |
| 28 | 1.3.1. Studying Android and Java development |  |  |  |  |  | was named 3.1. Studying Android and Java development |
| 29 | 1.3.2. Study about MEx technology |  |  |  |  |  | was named 3.2. Study about MEx technology |
| 30 | 1.3.3. Study Wifi communication and module Wifi Sheild |  |  |  |  |  | was named 3.3. Study Wifi communication and module Wifi Sheild |
| 31 | 1.3.4. Study about Arduino, Pi |  |  |  |  |  | was named 3.4. Study about Arduino, Pi |
| 32 | 1.3.5. Study about Circuit of hardware |  |  |  |  |  | was named 3.5. Study about Circuit of hardware |
| 33 | **1.4. Design** |  | 2017-06-05 A |  | 67% → 100% | 0d → none | was named 4. Design |
| 34 | **1.4.1. Design Car model for MEx System** |  | 2017-06-05 A |  | 67% → 100% |  | was named 4.1. Design Car model for MEx System; resources HuongLX → none |
| 36 | 1.4.2. Design Controller for MEx system |  | 2017-06-05 A |  | 67% → 100% |  | was named 4.2. Design Controller for Mex system |
| 37 | 1.4.3. Embedded and Android Software Archtecture design |  |  |  |  |  | was named 4.3 Embedded and Android Software Archtecture design |
| 38 | 1.4.4. Embedded and Android Software Detailed design |  | 2017-06-05 A |  | 33% → 100% |  | was named 4.4. Embedded and Android Software Detailed design; resources TuDN; HuongLX; LuatPD → TuDN; LuatPD; PhongDC |
| 39 | **1.5. Implementation** | 2017-06-01 A | 2017-06-27 → 2017-06-26 A (-1d) | 19d → 18d | 0% → 100% | 0d → none | was named 5. Implementation |
| 40 | 1.5.1. Assemble Components | 2017-06-05 A | 2017-06-12 A |  | 0% → 100% |  | was named 5.1. Assemble Components; resources TuDN; AnhLB → AnhLB |
| 41 | 1.5.2. Code for wifi communication between Android app and Car (arduino) | 2017-06-12 A | 2017-06-19 A |  | 0% → 100% |  | was named 5.2. Code for wifi communication |
| 42 | 1.5.3. Code for Car model embedded software module | 2017-06-01 A | 2017-06-26 A |  | 0% → 100% |  | was named 5.3. Code for Car model embedded software module; resources HuongLX; TuDN → HuongLX; HoangPM |
| 43 | 1.5.4. Code for Android application | 2017-06-01 A | 2017-06-23 A |  | 0% → 100% |  | was named 5.5.Code for Android application; resources LuatPD; PhongDC → PhongDC; TuDN |
| 45 | **1.6. Testing** | 2017-06-14 A | 2017-07-07 A |  | 0% → 100% | 0d → none | was named 6. Testing |
| 46 | 1.6.1. Design test cases | 2017-06-14 A | 2017-06-19 A |  | 0% → 100% |  | was named 6.1. Design test cases; resources TuDN; AnhLB; LuatPD → TuDN; LuatPD |
| 47 | 1.6.2. Hardware unit test | 2017-06-20 A | 2017-06-22 A |  | 0% → 100% |  | was named 6.2. Hardware unit test |
| 48 | 1.6.3. Hardware system test | 2017-06-23 A | 2017-06-25 A |  | 0% → 100% |  | was named 6.3. Hardware system test |
| 49 | 1.6.4. Software unit test | 2017-06-27 A | 2017-06-29 A |  | 0% → 100% |  | was named 6.4. Software unit test; resources PhongDC; AnhLB → PhongDC; TuDN |
| 50 | 1.6.5. Software system test | 2017-06-30 A | 2017-07-01 A |  | 0% → 100% |  | was named 6.5. Software system test |
| 51 | 1.6.6. System test | 2017-07-03 A | 2017-07-07 A |  | 0% → 100% |  | was named 6.6. System test |
| 52 | **Phase 2: Additional Function and Controller** | 2017-07-10 A |  |  | 0% → 98% | 3d → 0d | was named Phase 2: Additional Function |
| 53 | **2.1. Planning and preparing** | 2017-07-10 A | 2017-07-13 A |  | 0% → 100% | 31d → none | was named 1. Planning; constraint finish no earlier than 2017-07-13 → none; resources MEx Team → none |
| 55 | **2.2. Design** | 2017-07-13 A | 2017-07-20 → 2017-07-21 A (+1d) | 6d → 7d | 0% → 100% | 0d → none | was named 2. Design |
| 56 | 2.2.1. Design for Hardware | 2017-07-13 A | 2017-07-20 A |  | 0% → 100% |  | was named 2.1. Design for Hardware |
| 57 | 2.2.2. Design for embedded software | 2017-07-17 A | 2017-07-20 A |  | 0% → 100% |  | was named 2.2. Design for embedded software; resources MEx Team → HoangPM; HuongLX; LuatPD |
| 59 | **2.3. Implementation** | 2017-07-19 → 2017-07-10 A (-9d) | 2017-08-04 → 2017-08-11 (+7d) | 13d → 25d | 0% → 97% |  | was named 3. Implementation |
| 60 | 2.3.1. Assemble components | 2017-07-19 A | 2017-08-04 A |  | 0% → 100% |  | was named 3.1. Assemble components |
| 61 | 2.3.2. Update Embedded software | 2017-07-19 A | 2017-08-04 A |  | 0% → 100% |  | was named 3.2. Update Embedded software; resources HoangPM; LuatPD; TuDN → HoangPM; HuongLX |
| 67 | **2.4. Testing** | 2017-08-07 A | 2017-08-18 A |  | 0% → 100% | 0d → none | was named 4. Testing |
| 68 | 2.4.1. Design Test cases | 2017-08-07 A | 2017-08-09 A |  | 0% → 100% |  | was named 4.1. Design Test cases; resources HoangPM; LuatPD; TuDN → LuatPD; TuDN |
| 69 | 2.4.2. Hardware unit test | 2017-08-07 A | 2017-08-09 A |  | 0% → 100% |  | was named 4.2. Hardware unit test; resources AnhLB; HuongLX; PhongDC → HuongLX; HoangPM |
| 70 | 2.4.3. System test | 2017-08-10 A | 2017-08-18 A |  | 0% → 100% |  | was named 4.3. System test |
| 77 | **Prepare for the Thesis Defend** | 2017-08-20 A | 2017-08-25 A |  | 0% → 100% | 0d → none |  |
| 78 | 1. Project review | 2017-08-20 A | 2017-08-21 A |  | 0% → 100% |  |  |
| 79 | 2. Print documents | 2017-08-21 A | 2017-08-21 A |  | 0% → 100% |  |  |
| 80 | 3. Prepare for the final presentation | 2017-08-23 A | 2017-08-25 A |  | 0% → 100% |  |  |
| 81 | **Document** | 2017-05-11 A | 2017-08-19 A |  | 0% → 100% | 0d → none |  |
| 82 | 1. Report 1: Introduction | 2017-05-11 A | 2017-05-18 A |  | 0% → 100% |  |  |
| 83 | 2. Report 2: Project management plan | 2017-05-22 A | 2017-05-29 A |  | 0% → 100% |  | resources TuDN; HoangPM → TuDN |
| 84 | 3. Report 3: System requirements specifications | 2017-05-29 A | 2017-06-19 A |  | 0% → 100% |  | resources TuDN; AnhLB → LuatPD |
| 85 | 4. Report 4: System design description | 2017-06-26 A | 2017-07-07 A |  | 0% → 100% |  | resources TuDN; AnhLB → TuDN; LuatPD |
| 86 | 5. Report 5: System implementation & test | 2017-07-10 A | 2017-08-07 A |  | 0% → 100% |  | resources TuDN; AnhLB → AnhLB; LuatPD |
| 87 | 6. Report 6: System User's Manual | 2017-08-07 A | 2017-08-19 A |  | 0% → 100% |  | resources TuDN → TuDN; LuatPD |
| 88 | 7. Slide | 2017-08-11 A | 2017-08-19 A |  | 0% → 100% |  |  |
| 89 | 8. Final report | 2017-08-11 A | 2017-08-19 A |  | 0% → 100% |  |  |
